# NKC2

Schedule from MS Project XML, 2026-02-23 to 2027-05-31, status date 2026-02-23.

## Calendars

- 6x8: Mon-Fri 08:00-16:00; Sat-Sun off.

## Schedule

| ID | WBS | Task | Duration | Start | Finish | Predecessors | Baseline start | Baseline finish | Baseline duration | Total slack | Free slack | Constraint | Text1 |
| --- | --- | --- | --- | --- | --- | --- | --- | --- | --- | --- | --- | --- | --- |
| 1 | 1 | **งานเตรียมงาน** |  |  |  |  |  |  |  |  |  |  |  |
| 2 | 1.1 | **Mobilization** |  |  |  |  |  |  |  |  |  |  |  |
| 3 | 1.1 | Site Mobilization | 45d | 2026-02-23 | 2026-04-24 |  | 2026-02-23 | 2026-04-24 | 45d |  |  |  | A1000 |
| 4 | 1.2 | **งานรื้อถอน** |  |  |  |  |  |  |  |  |  |  |  |
| 5 | 1.2 | Roof &amp; Roof Floor | 15d | 2026-05-08 | 2026-05-28 | 6 | 2026-05-08 | 2026-05-28 | 15d | 0.44d |  |  | A1005 |
| 6 | 1.2 | 3rd Floor | 15d | 2026-04-17 | 2026-05-07 |  | 2026-04-17 | 2026-05-07 | 15d | 0d |  | must start on 2026-04-17 | A1010 |
| 7 | 1.2 | 2nd Floor | 15d | 2026-05-08 | 2026-05-28 | 6 | 2026-05-08 | 2026-05-28 | 15d | 0d |  |  | A1020 |
| 8 | 1.2 | Mezzanine Floor | 15d | 2026-05-29 | 2026-06-18 | 7 | 2026-05-29 | 2026-06-18 | 15d | 0d |  |  | A1030 |
| 9 | 1.2 | Ground Floor | 20d | 2026-06-19 | 2026-07-16 | 8 | 2026-06-19 | 2026-07-16 | 20d | 0d |  |  | A1040 |
| 10 | 1.2 | External | 20d | 2026-07-17 | 2026-08-13 | 9 | 2026-07-17 | 2026-08-13 | 20d | 0.34d |  |  | A1050 |
| 11 | 1.3 | **งานซ่อมโครงสร้าง** |  |  |  |  |  |  |  |  |  |  |  |
| 12 | 1.3 | Ground FL | 10d | 2026-07-17 | 2026-07-30 | 9 | 2026-07-17 | 2026-07-30 | 10d | 0d |  |  | A1060 |
| 13 | 1.3 | 2nd FL | 10d | 2026-07-31 | 2026-08-13 | 12 | 2026-07-31 | 2026-08-13 | 10d | 0d |  |  | A1070 |
| 14 | 1.3 | 3rd FL | 10d | 2026-08-14 | 2026-08-27 | 13 | 2026-08-14 | 2026-08-27 | 10d | 0d |  |  | A1080 |
| 15 | 1.3 | Roof FL | 5d | 2026-08-28 | 2026-09-03 | 14 | 2026-08-28 | 2026-09-03 | 5d | 0d |  |  | A1090 |
| 16 | 2 | **Structure** |  |  |  |  |  |  |  |  |  |  |  |
| 17 | 2.1 | **Pilling Work** |  |  |  |  |  |  |  |  |  |  |  |
| 18 | 2.1 | Bored Pile | 20d | 2026-07-27 | 2026-08-21 |  | 2026-07-27 | 2026-08-21 | 20d | 0d |  | must start on 2026-07-25 | A1100 |
| 19 | 2.2 | **Toilet &amp; Pantry** |  |  |  |  |  |  |  |  |  |  |  |
| 20 | 2.2 | Foundation | 15d | 2026-08-24 | 2026-09-11 | 18 | 2026-08-24 | 2026-09-11 | 15d | 0.01d | 0d |  | A1110 |
| 21 | 2.2 | RC Beam &amp;amp; Slab for GL.Floor | 10d | 2026-09-14 | 2026-09-25 | 20 | 2026-09-14 | 2026-09-25 | 10d | 0.02d | 0d |  | A1120 |
| 22 | 2.2 | Steel Column &amp;amp; Beam M to R | 15d | 2026-09-28 | 2026-10-16 | 21 | 2026-09-28 | 2026-10-16 | 15d | 0.02d | 0d |  | A1130 |
| 23 | 2.2 | RC Slab M to R | 15d | 2026-10-19 | 2026-11-06 | 22 | 2026-10-19 | 2026-11-06 | 15d | 0.02d | 0d |  | A1140 |
| 24 | 2.3 | **Lift** |  |  |  |  |  |  |  |  |  |  |  |
| 25 | 2.3 | Foundation | 7d | 2026-09-14 | 2026-09-22 | 20 | 2026-09-14 | 2026-09-22 | 7d | 0.01d | 0d |  | A1150 |
| 26 | 2.3 | RC Beam &amp;amp; Slab for GL.Floor | 7d | 2026-09-23 | 2026-10-01 | 25 | 2026-09-23 | 2026-10-01 | 7d | 0.01d | 0d |  | A1160 |
| 27 | 2.3 | Steel Column &amp;amp; Beam M to R | 10d | 2026-10-02 | 2026-10-15 | 26 | 2026-10-02 | 2026-10-15 | 10d | 0.02d | 0d |  | A1170 |
| 28 | 2.3 | RC Slab M to R | 10d | 2026-10-16 | 2026-10-29 | 27 | 2026-10-16 | 2026-10-29 | 10d | 0.02d | 0d |  | A1180 |

| ID | WBS | Task | Duration | Start | Finish | Predecessors | Baseline start | Baseline finish | Baseline duration | Total slack | Free slack | Text1 |
| --- | --- | --- | --- | --- | --- | --- | --- | --- | --- | --- | --- | --- |
| 29 | 2.4 | **Roof Str.** |  |  |  |  |  |  |  |  |  |  |
| 30 | 2.4 | Supports Installation | 7d | 2026-08-17 | 2026-08-25 | 18FS-40h | 2026-08-17 | 2026-08-25 | 7d | 0.02d | 0d | A1190 |
| 31 | 2.4 | Rafter Truss | 31d | 2026-08-26 | 2026-10-07 | 30 | 2026-08-26 | 2026-10-07 | 31d | 0.02d | 0d | A1200 |
| 32 | 2.4 | Purin | 15d | 2026-10-08 | 2026-10-28 | 31 | 2026-10-08 | 2026-10-28 | 15d | 0.09d | 0d | A1210 |
| 33 | 2.4 | Paint | 7d | 2026-10-29 | 2026-11-06 | 32 | 2026-10-29 | 2026-11-06 | 7d | 0.09d | 0d | A1220 |
| 34 | 2.5 | **ห้องศาสนา** |  |  |  |  |  |  |  |  |  |  |
| 35 | 2.5 | Supports Installation | 5d | 2026-10-08 | 2026-10-14 | 31 | 2026-10-08 | 2026-10-14 | 5d | 0.18d | 0d | A1230 |
| 36 | 2.5 | Steel Columns | 5d | 2026-10-15 | 2026-10-21 | 35 | 2026-10-15 | 2026-10-21 | 5d | 0.18d | 0d | A1240 |
| 37 | 2.5 | Steel Roof Frame | 10d | 2026-10-22 | 2026-11-04 | 36 | 2026-10-22 | 2026-11-04 | 10d | 0.18d | 0d | A1250 |
| 38 | 2.6 | **ห้องสนามหลวง** |  |  |  |  |  |  |  |  |  |  |
| 39 | 2.6 | Supports Installation | 5d | 2026-11-05 | 2026-11-11 | 37 | 2026-11-05 | 2026-11-11 | 5d | 0.18d | 0d | A1260 |
| 40 | 2.6 | Steel Columns | 5d | 2026-11-12 | 2026-11-18 | 39 | 2026-11-12 | 2026-11-18 | 5d | 0.18d | 0d | A1270 |
| 41 | 2.6 | Steel Roof Frame | 10d | 2026-11-19 | 2026-12-02 | 40 | 2026-11-19 | 2026-12-02 | 10d | 0.18d | 0d | A1280 |
| 42 | 2.7 | **ส่วนต่อขยายชั้น 2** |  |  |  |  |  |  |  |  |  |  |
| 43 | 2.7 | Supports Installation | 5d | 2026-12-03 | 2026-12-09 | 41 | 2026-12-03 | 2026-12-09 | 5d | 0.18d | 0d | A1290 |
| 44 | 2.7 | Built-up Frame&amp;amp;Slab | 10d | 2026-12-10 | 2026-12-23 | 43 | 2026-12-10 | 2026-12-23 | 10d | 0.18d | 0d | A1300 |
| 45 | 2.7 | Concrete Top | 5d | 2026-12-24 | 2026-12-30 | 44 | 2026-12-24 | 2026-12-30 | 5d | 0.18d |  | A1310 |
| 46 | 2.8 | **Mezzanine** |  |  |  |  |  |  |  |  |  |  |
| 47 | 2.8 | Supports Installation | 5d | 2026-10-08 | 2026-10-14 | 31 | 2026-10-08 | 2026-10-14 | 5d | 0.02d | 0d | A1320 |
| 48 | 2.8 | Columns | 10d | 2026-10-15 | 2026-10-28 | 47 | 2026-10-15 | 2026-10-28 | 10d | 0.02d | 0d | A1330 |
| 49 | 2.8 | Built-up Frame&amp;amp;Slab | 40d | 2026-10-29 | 2026-12-23 | 48 | 2026-10-29 | 2026-12-23 | 40d | 0.02d | 0d | A1340 |
| 50 | 2.8 | Concrete Top | 5d | 2026-12-24 | 2026-12-30 | 49 | 2026-12-24 | 2026-12-30 | 5d | 0.02d | 0d | A1350 |
| 51 | 2.9 | **Workshop room** |  |  |  |  |  |  |  |  |  |  |
| 52 | 2.9 | Support Installation | 5d | 2026-12-31 | 2027-01-06 | 50 | 2026-12-31 | 2027-01-06 | 5d | 0.12d | 0d | A1360 |
| 53 | 2.9 | Steel Column &amp;amp; Beam | 5d | 2027-01-07 | 2027-01-13 | 52 | 2027-01-07 | 2027-01-13 | 5d | 0.12d | 0d | A1370 |
| 54 | 2.9 | Fiber Cement Slab | 5d | 2027-01-14 | 2027-01-20 | 53 | 2027-01-14 | 2027-01-20 | 5d | 0.12d | 0d | A1380 |

| ID | WBS | Task | Duration | Start | Finish | Predecessors | Baseline start | Baseline finish | Baseline duration | Total slack | Free slack | Constraint | Text1 |
| --- | --- | --- | --- | --- | --- | --- | --- | --- | --- | --- | --- | --- | --- |
| 55 | 2.10 | **ST6** |  |  |  |  |  |  |  |  |  |  |  |
| 56 | 2.10 | Support Installation | 5d | 2027-01-21 | 2027-01-27 | 54 | 2027-01-21 | 2027-01-27 | 5d | 0.12d | 0d |  | A1390 |
| 57 | 2.10 | Built-up Frame&amp;amp;Slab | 10d | 2027-01-28 | 2027-02-10 | 56 | 2027-01-28 | 2027-02-10 | 10d | 0.12d | 0d |  | A1400 |
| 58 | 2.10 | Concrete Top | 5d | 2027-02-11 | 2027-02-17 | 57 | 2027-02-11 | 2027-02-17 | 5d | 0.12d |  |  | A1410 |
| 59 | 2.11 | **MEP Foundation** |  |  |  |  |  |  |  |  |  |  |  |
| 60 | 2.11 | Pile Driven | 10d | 2026-10-02 | 2026-10-15 | 26 | 2026-10-02 | 2026-10-15 | 10d | 0.01d | 0d |  | A1420 |
| 61 | 2.11 | WWT - Excavation&amp;amp;Concrete Work | 15d | 2026-10-16 | 2026-11-05 | 60 | 2026-10-16 | 2026-11-05 | 15d | 0.01d | 0d |  | A1430 |
| 62 | 2.11 | WWWT - Excavation&amp;amp;Concrete Work | 15d | 2026-11-06 | 2026-11-26 | 61 | 2026-11-06 | 2026-11-26 | 15d | 0.01d | 0d |  | A1440 |
| 63 | 2.11 | Grease Trap - Excavation&amp;amp;Concrete Work | 8d | 2026-11-27 | 2026-12-08 | 62 | 2026-11-27 | 2026-12-08 | 8d | 0.01d | 0d |  | A1450 |
| 64 | 2.11 | EE Plateform - Concrete Work | 7d | 2026-12-09 | 2026-12-17 | 63 | 2026-12-09 | 2026-12-17 | 7d | 0.01d | 0d |  | A1460 |
| 65 | 2.12 | **Entrance** |  |  |  |  |  |  |  |  |  |  |  |
| 66 | 2.12 | ทางเข้าบันไดหลัก 1 | 8d | 2026-12-18 | 2026-12-29 | 64 | 2026-12-18 | 2026-12-29 | 8d | 0.15d | 0d |  | A1470 |
| 67 | 2.12 | ทางเข้าบันไดหลัก 2 | 7d | 2026-12-30 | 2027-01-07 | 66 | 2026-12-30 | 2027-01-07 | 7d | 0.15d | 0d |  | A1480 |
| 68 | 2.12 | ทางเข้าบันไดรอง 1 | 10d | 2027-01-08 | 2027-01-21 | 67 | 2027-01-08 | 2027-01-21 | 10d | 0.15d |  |  | A1490 |
| 69 | 2.12 | ทางเข้าบันไดรอง 2 | 7d | 2026-12-18 | 2026-12-28 | 64 | 2026-12-18 | 2026-12-28 | 7d | 0.01d | 0d |  | A1500 |
| 70 | 2.12 | Entrance ST2 | 7d | 2026-12-29 | 2027-01-06 | 69 | 2026-12-29 | 2027-01-06 | 7d | 0.01d | 0d |  | A1510 |
| 71 | 2.12 | Entrance ST4 | 7d | 2027-01-07 | 2027-01-15 | 70 | 2027-01-07 | 2027-01-15 | 7d | 0.01d | 0d |  | A1520 |
| 72 | 3 | **Architecture and MEP** |  |  |  |  |  |  |  |  |  |  |  |
| 73 | 3.1 | **งาน Riser** |  |  |  |  |  |  |  |  |  |  |  |
| 74 | 3.1.12 | **1st to Roof** |  |  |  |  |  |  |  |  |  |  |  |
| 75 | 3.1.12 | งานก่ออิฐช่องชาร์ปงานระบบประกอบอาคาร | 30d | 2026-09-01 | 2026-10-12 |  | 2026-09-01 | 2026-10-12 | 30d | 0.17d | 0d | start no earlier than 2026-09-01 | A1530 |
| 76 | 3.1.12 | Electrical and Communication Riser | 65d | 2026-10-13 | 2027-01-11 | 75 | 2026-10-13 | 2027-01-11 | 65d | 0.17d |  |  | A1540 |
| 77 | 3.1.12 | Sanitary and Fire Protection Riser | 65d | 2026-10-13 | 2027-01-11 | 75 | 2026-10-13 | 2027-01-11 | 65d | 0.17d |  |  | A1550 |
| 78 | 3.1.12 | Air Conditioning Riser | 65d | 2026-10-13 | 2027-01-11 | 75 | 2026-10-13 | 2027-01-11 | 65d | 0.17d |  |  | A1560 |

| ID | WBS | Task | Duration | Start | Finish | Predecessors | Baseline start | Baseline finish | Baseline duration | Total slack | Free slack | Text1 |
| --- | --- | --- | --- | --- | --- | --- | --- | --- | --- | --- | --- | --- |
| 79 | 3.2 | **1st Floor** |  |  |  |  |  |  |  |  |  |  |
| 80 | 3.2.1 | **Wall / Wall Fn.** |  |  |  |  |  |  |  |  |  |  |
| 81 | 3.2.1 | งานก่ออิฐมวลเบา ฉาบเรียบ | 20d | 2026-11-09 | 2026-12-04 | 23 | 2026-11-09 | 2026-12-04 | 20d | 0.02d | 0d | A1570 |
| 82 | 3.2.1 | งานกรุกระเบื้องโมเสค ผนังห้องน้ำ | 20d | 2026-12-07 | 2027-01-01 | 81 | 2026-12-07 | 2027-01-01 | 20d | 0.12d | 0d | A1580 |
| 83 | 3.2.1 | งานแต่งเรียบผนังภายในเดิม | 15d | 2026-09-04 | 2026-09-24 | 15 | 2026-09-04 | 2026-09-24 | 15d | 0d |  | A1590 |
| 84 | 3.2.2 | **Ceiling** |  |  |  |  |  |  |  |  |  |  |
| 85 | 3.2.2 | ฝ้าเหล็กรูปพรรณ สีน้ำมัน ใต้พื้นชั้นลอย | 15d | 2026-12-31 | 2027-01-20 | 50 | 2026-12-31 | 2027-01-20 | 15d | 0.03d | 0d | A1600 |
| 86 | 3.2.2 | งานฝ้าห้องน้ำ | 10d | 2027-01-04 | 2027-01-15 | 82 | 2027-01-04 | 2027-01-15 | 10d | 0.12d | 0d | A1610 |
| 87 | 3.2.2 | งานแต่งเรียบท้องพื้น ท้องคาน | 15d | 2026-09-25 | 2026-10-15 | 83 | 2026-09-25 | 2026-10-15 | 15d | 0d |  | A1620 |
| 88 | 3.2.3 | **Floor &amp; Floor Fn.** |  |  |  |  |  |  |  |  |  |  |
| 89 | 3.2.3 | งานพื้นขัดเรียบพื้นที่จัดหาผลประโยชน์ | 15d | 2026-12-31 | 2027-01-20 | 50 | 2026-12-31 | 2027-01-20 | 15d | 0.02d | 0d | A1630 |
| 90 | 3.2.3 | งานพื้นหินขัด Lobby, Workshop rm. | 20d | 2027-03-18 | 2027-04-14 | 94, 195 | 2027-03-18 | 2027-04-14 | 20d | 0.06d |  | A1640 |
| 91 | 3.2.3 | งานพื้น Epoxy - Corridore, Lift Lobby, Office | 10d | 2027-05-05 | 2027-05-18 | 126FS-56h | 2027-05-05 | 2027-05-18 | 10d | 0.01d |  | A1650 |
| 92 | 3.2.3 | งานปูหินแกรนิต ปูกระเบื้อง ห้องน้ำ | 15d | 2027-01-18 | 2027-02-05 | 86 | 2027-01-18 | 2027-02-05 | 15d | 0.12d | 0d | A1660 |
| 93 | 3.2.4 | **Doors &amp; Windows** |  |  |  |  |  |  |  |  |  |  |
| 94 | 3.2.4 | งานติดตั้งผนังกระจก และประตูกระจกอลูมิเนียม | 20d | 2027-01-21 | 2027-02-17 | 89 | 2027-01-21 | 2027-02-17 | 20d | 0.02d | 0d | A1670 |
| 95 | 3.2.5 | **MEP** |  |  |  |  |  |  |  |  |  |  |
| 96 | 3.2.5 | First Fix Wall and Ceiling | 45d | 2026-11-19 | 2027-01-20 | 85FF | 2026-11-19 | 2027-01-20 | 45d | 0.03d | 0d | A1680 |
| 97 | 3.2.5 | งานติดอุปกรณ์ Second Fix | 25d | 2027-01-21 | 2027-02-24 | 96 | 2027-01-21 | 2027-02-24 | 25d | 0.11d |  | A1690 |
| 98 | 3.2.5 | งานติดตั้ง MDB&amp;EMDB | 30d | 2027-01-21 | 2027-03-03 | 96 | 2027-01-21 | 2027-03-03 | 30d | 0.03d | 0d | A1700 |
| 99 | 3.2.5 | งานติดตั้ง Main Communication | 45d | 2027-03-04 | 2027-05-05 | 98 | 2027-03-04 | 2027-05-05 | 45d | 0.03d |  | A1710 |
| 100 | 3.3 | **Mezzanine** |  |  |  |  |  |  |  |  |  |  |
| 101 | 3.3.1 | **Wall / Wall Fn.** |  |  |  |  |  |  |  |  |  |  |
| 102 | 3.3.1 | งานก่ออิฐมวลเบา ฉาบเรียบ | 20d | 2026-12-07 | 2027-01-01 | 81 | 2026-12-07 | 2027-01-01 | 20d | 0.02d | 0d | A1720 |
| 103 | 3.3.1 | งานกรุกระเบื้องโมเสค ผนังห้องน้ำ | 20d | 2027-01-04 | 2027-01-29 | 102 | 2027-01-04 | 2027-01-29 | 20d | 0.09d | 0d | A1730 |
| 104 | 3.3.1 | งานแต่งเรียบผนังภายในเดิม | 15d | 2026-10-16 | 2026-11-05 | 87 | 2026-10-16 | 2026-11-05 | 15d | 0d |  | A1740 |

| ID | WBS | Task | Duration | Start | Finish | Predecessors | Baseline start | Baseline finish | Baseline duration | Total slack | Free slack | Text1 |
| --- | --- | --- | --- | --- | --- | --- | --- | --- | --- | --- | --- | --- |
| 105 | 3.3.2 | **Ceiling** |  |  |  |  |  |  |  |  |  |  |
| 106 | 3.3.2 | งานฝ้าห้องน้ำ | 10d | 2027-02-01 | 2027-02-12 | 103 | 2027-02-01 | 2027-02-12 | 10d | 0.09d | 0d | A1750 |
| 107 | 3.3.2 | งานแต่งเรียบท้องพื้น ท้องคาน | 15d | 2026-11-06 | 2026-11-26 | 104 | 2026-11-06 | 2026-11-26 | 15d | 0d |  | A1760 |
| 108 | 3.3.2 | งานฝ้ากันเสียง ฝ้าอลูมิเนียมห้องประชุม | 15d | 2027-03-11 | 2027-03-31 | 113 | 2027-03-11 | 2027-03-31 | 15d | 0.07d |  | A1770 |
| 109 | 3.3.3 | **Floor&amp; Floor Fn.** |  |  |  |  |  |  |  |  |  |  |
| 110 | 3.3.3 | งานปูกระเบื้องยาง | 10d | 2027-04-29 | 2027-05-12 | 203 | 2027-04-29 | 2027-05-12 | 10d | 0.02d |  | A1780 |
| 111 | 3.3.3 | งานปูหินแกรนิต ปูกระเบื้อง ห้องน้ำ | 15d | 2027-02-15 | 2027-03-05 | 106 | 2027-02-15 | 2027-03-05 | 15d | 0.09d | 0d | A1790 |
| 112 | 3.3.4 | **Doors &amp; Windows** |  |  |  |  |  |  |  |  |  |  |
| 113 | 3.3.4 | งานติดตั้งผนังกระจก และประตูกระจกอลูมิเนียม | 20d | 2027-02-11 | 2027-03-10 | 94FS-40h | 2027-02-11 | 2027-03-10 | 20d | 0.02d | 0d | A1800 |
| 114 | 3.3.5 | **MEP** |  |  |  |  |  |  |  |  |  |  |
| 115 | 3.3.5 | First Fix Wall and Ceiling | 50d | 2026-11-27 | 2027-02-04 | 107 | 2026-11-27 | 2027-02-04 | 50d | 0.09d | 0d | A1810 |
| 116 | 3.3.5 | งานติดอุปกรณ์ Second Fix | 30d | 2027-02-05 | 2027-03-18 | 115 | 2027-02-05 | 2027-03-18 | 30d | 0.09d |  | A1820 |
| 117 | 3.4 | **2nd Floor** |  |  |  |  |  |  |  |  |  |  |
| 118 | 3.4.1 | **Wall / Wall Fn.** |  |  |  |  |  |  |  |  |  |  |
| 119 | 3.4.1 | งานก่ออิฐมวลเบา ฉาบเรียบ | 20d | 2027-01-04 | 2027-01-29 | 102 | 2027-01-04 | 2027-01-29 | 20d | 0.02d | 0d | A1830 |
| 120 | 3.4.1 | งานกรุกระเบื้องโมเสค ผนังห้องน้ำ | 20d | 2027-02-01 | 2027-02-26 | 119 | 2027-02-01 | 2027-02-26 | 20d | 0.05d | 0d | A1840 |
| 121 | 3.4.1 | งานแต่งเรียบผนังภายในเดิม | 15d | 2026-11-27 | 2026-12-17 | 107 | 2026-11-27 | 2026-12-17 | 15d | 0d |  | A1850 |
| 122 | 3.4.2 | **Ceiling** |  |  |  |  |  |  |  |  |  |  |
| 123 | 3.4.2 | งานฝ้าห้องน้ำ | 10d | 2027-03-01 | 2027-03-12 | 120 | 2027-03-01 | 2027-03-12 | 10d | 0.05d | 0d | A1860 |
| 124 | 3.4.2 | งานแต่งเรียบท้องพื้น ท้องคาน | 15d | 2026-12-18 | 2027-01-07 | 121 | 2026-12-18 | 2027-01-07 | 15d | 0d |  | A1870 |
| 125 | 3.4.3 | **Floor &amp;amp; Floor Fn.** |  |  |  |  |  |  |  |  |  |  |
| 126 | 3.4.3 | งานพื้น Epoxy - Corridore, Lift Lobby, Office | 15d | 2027-04-23 | 2027-05-13 | 209 | 2027-04-23 | 2027-05-13 | 15d | 0.01d | 0d | A1880 |
| 127 | 3.4.3 | งานปรับระดับพื้น | 15d | 2027-01-08 | 2027-01-28 | 124 | 2027-01-08 | 2027-01-28 | 15d | 0.01d | 0d | A1890 |
| 128 | 3.4.3 | งานปูกระเบื้องยาง | 10d | 2027-04-23 | 2027-05-06 | 208 | 2027-04-23 | 2027-05-06 | 10d | 0.03d |  | A1900 |
| 129 | 3.4.3 | งานปูหินแกรนิต ปูกระเบื้อง ห้องน้ำ | 15d | 2027-03-15 | 2027-04-02 | 123 | 2027-03-15 | 2027-04-02 | 15d | 0.05d | 0d | A1910 |

| ID | WBS | Task | Duration | Start | Finish | Predecessors | Baseline start | Baseline finish | Baseline duration | Total slack | Free slack | Text1 |
| --- | --- | --- | --- | --- | --- | --- | --- | --- | --- | --- | --- | --- |
| 130 | 3.4.4 | **Doors &amp; Windows** |  |  |  |  |  |  |  |  |  |  |
| 131 | 3.4.4 | งานติดตั้งผนังกระจก และประตูกระจกอลูมิเนียม | 20d | 2027-01-29 | 2027-02-25 | 127 | 2027-01-29 | 2027-02-25 | 20d | 0.01d | 0d | A1920 |
| 132 | 3.4.5 | **MEP** |  |  |  |  |  |  |  |  |  |  |
| 133 | 3.4.5 | First Fix Wall and Ceiling | 50d | 2027-01-08 | 2027-03-18 | 124 | 2027-01-08 | 2027-03-18 | 50d | 0.02d | 0d | A1930 |
| 134 | 3.4.5 | งานติดอุปกรณ์ Second Fix | 40d | 2027-03-19 | 2027-05-13 | 133 | 2027-03-19 | 2027-05-13 | 40d | 0.02d |  | A1940 |
| 135 | 3.5 | **3rd Floor** |  |  |  |  |  |  |  |  |  |  |
| 136 | 3.5.1 | **Wall / Wall Fn.** |  |  |  |  |  |  |  |  |  |  |
| 137 | 3.5.1 | งานก่ออิฐมวลเบา ฉาบเรียบ | 20d | 2027-02-01 | 2027-02-26 | 119 | 2027-02-01 | 2027-02-26 | 20d | 0.02d | 0d | A1950 |
| 138 | 3.5.1 | งานกรุกระเบื้องโมเสค ผนังห้องน้ำ | 20d | 2027-03-01 | 2027-03-26 | 137 | 2027-03-01 | 2027-03-26 | 20d | 0.02d | 0d | A1960 |
| 139 | 3.5.1 | งานแต่งเรียบผนังภายในเดิม | 15d | 2027-01-08 | 2027-01-28 | 124 | 2027-01-08 | 2027-01-28 | 15d | 0d |  | A1970 |
| 140 | 3.5.2 | **Ceiling** |  |  |  |  |  |  |  |  |  |  |
| 141 | 3.5.2 | งานฝ้าห้องน้ำ | 10d | 2027-03-29 | 2027-04-09 | 138 | 2027-03-29 | 2027-04-09 | 10d | 0.02d | 0d | A1980 |
| 142 | 3.5.2 | งานแต่งเรียบท้องพื้น ท้องคาน | 15d | 2027-01-29 | 2027-02-18 | 139 | 2027-01-29 | 2027-02-18 | 15d | 0d |  | A1990 |
| 143 | 3.5.3 | **Floor &amp; Floor Fn.** |  |  |  |  |  |  |  |  |  |  |
| 144 | 3.5.3 | งานปรับระดับพื้น | 15d | 2027-02-19 | 2027-03-11 | 142 | 2027-02-19 | 2027-03-11 | 15d | 0d |  | A2000 |
| 145 | 3.5.3 | งานปูกระเบื้องยาง | 7d | 2027-05-21 | 2027-05-31 | 214FS-56h | 2027-05-21 | 2027-05-31 | 7d | 0d |  | A2010 |
| 146 | 3.5.3 | งานพื้น Epoxy - Corridore, Lift Lobby, Office | 10d | 2027-05-18 | 2027-05-31 | 215FS-80h | 2027-05-18 | 2027-05-31 | 10d | 0d |  | A2020 |
| 147 | 3.5.3 | งานปูหินแกรนิต ปูกระเบื้อง ห้องน้ำ | 15d | 2027-04-12 | 2027-04-30 | 141 | 2027-04-12 | 2027-04-30 | 15d | 0.02d | 0d | A2030 |
| 148 | 3.5.4 | **Doors &amp; Windows** |  |  |  |  |  |  |  |  |  |  |
| 149 | 3.5.4 | งานติดตั้งผนังกระจก และประตูกระจกอลูมิเนียม | 20d | 2027-03-12 | 2027-04-08 | 144 | 2027-03-12 | 2027-04-08 | 20d | 0d |  | A2040 |
| 150 | 3.5.5 | **MEP** |  |  |  |  |  |  |  |  |  |  |
| 151 | 3.5.5 | First Fix Wall and Ceiling | 50d | 2027-01-29 | 2027-04-08 | 139 | 2027-01-29 | 2027-04-08 | 50d | 0.02d | 0d | A2050 |
| 152 | 3.5.5 | งานติดอุปกรณ์ Second Fix | 30d | 2027-04-02 | 2027-05-13 | 151FS-40h | 2027-04-02 | 2027-05-13 | 30d | 0.02d |  | A2060 |
| 153 | 3.5.5 | งานติดตั้ง UPS and Communication Work | 30d | 2027-04-05 | 2027-05-14 | 151FS-32h | 2027-04-05 | 2027-05-14 | 30d | 0.02d |  | A2070 |

| ID | WBS | Task | Duration | Start | Finish | Predecessors | Baseline start | Baseline finish | Baseline duration | Total slack | Free slack | Text1 |
| --- | --- | --- | --- | --- | --- | --- | --- | --- | --- | --- | --- | --- |
| 154 | 3.6 | **R Floor** |  |  |  |  |  |  |  |  |  |  |
| 155 | 3.6.1 | **Wall / Wall Fn.** |  |  |  |  |  |  |  |  |  |  |
| 156 | 3.6.1 | งานก่ออิฐมวลเบา ฉาบเรียบ | 10d | 2027-03-01 | 2027-03-12 | 137 | 2027-03-01 | 2027-03-12 | 10d | 0.08d | 0d | A2080 |
| 157 | 3.6.1 | งานแต่งเรียบผนังภายในเดิม | 10d | 2027-02-19 | 2027-03-04 | 142 | 2027-02-19 | 2027-03-04 | 10d | 0d |  | A2090 |
| 158 | 3.6.2 | **Ceiling** |  |  |  |  |  |  |  |  |  |  |
| 159 | 3.6.2 | งานฝ้ายิปซัมบอร์ด ฉาบเรียบทาสี | 10d | 2027-03-15 | 2027-03-26 | 156 | 2027-03-15 | 2027-03-26 | 10d | 0.08d |  | A2100 |
| 160 | 3.6.2 | งานแต่งเรียบท้องพื้น ท้องคาน | 10d | 2027-03-05 | 2027-03-18 | 157 | 2027-03-05 | 2027-03-18 | 10d | 0d |  | A2110 |
| 161 | 3.6.3 | **Floor &amp; Floor Fn.** |  |  |  |  |  |  |  |  |  |  |
| 162 | 3.6.3 | งานปรับระดับพื้น | 10d | 2027-03-19 | 2027-04-01 | 160 | 2027-03-19 | 2027-04-01 | 10d | 0d |  | A2120 |
| 163 | 3.6.3 | งานปูกระเบื้องยาง | 10d | 2027-05-07 | 2027-05-20 | 219 | 2027-05-07 | 2027-05-20 | 10d | 0.01d |  | A2130 |
| 164 | 3.6.3 | งานพื้น Epoxy - Corridore, Lift Lobby, Office | 15d | 2027-05-07 | 2027-05-27 | 219 | 2027-05-07 | 2027-05-27 | 15d | 0d |  | A2140 |
| 165 | 3.6.4 | **Doors &amp; Windows** |  |  |  |  |  |  |  |  |  |  |
| 166 | 3.6.4 | งานติดตั้งผนังกระจก และประตูกระจกอลูมิเนียม | 15d | 2027-04-02 | 2027-04-22 | 149FS-40h, 162 | 2027-04-02 | 2027-04-22 | 15d | 0d |  | A2150 |
| 167 | 3.6.5 | **MEP** |  |  |  |  |  |  |  |  |  |  |
| 168 | 3.6.5 | First Fix Wall and Ceiling | 20d | 2027-03-05 | 2027-04-01 | 157 | 2027-03-05 | 2027-04-01 | 20d | 0.01d | 0d | A2160 |
| 169 | 3.6.5 | งานติดอุปกรณ์ Second Fix | 15d | 2027-04-02 | 2027-04-22 | 168 | 2027-04-02 | 2027-04-22 | 15d | 0.01d | 0d | A2170 |
| 170 | 3.6.5 | งานติดตั้ง CDU VRF | 30d | 2027-04-13 | 2027-05-24 | 169FS-64h | 2027-04-13 | 2027-05-24 | 30d | 0.01d |  | A2180 |
| 171 | 3.7 | **Roof Finish** |  |  |  |  |  |  |  |  |  |  |
| 172 | 3.7.1 | **งานระบบกันซึม** |  |  |  |  |  |  |  |  |  |  |
| 173 | 3.7.1 | งานระบบกันซึมรางน้ำ | 15d | 2026-11-09 | 2026-11-27 | 33 | 2026-11-09 | 2026-11-27 | 15d | 0.09d | 0d | A2190 |
| 174 | 3.7.1 | งานระบบกันซึมพื้นดาดฟ้า | 30d | 2026-11-30 | 2027-01-08 | 173 | 2026-11-30 | 2027-01-08 | 30d | 0.09d | 0d | A2200 |
| 175 | 3.7.2 | **งานมุงหลังคา** |  |  |  |  |  |  |  |  |  |  |
| 176 | 3.7.2 | Metal Sheet Roof | 15d | 2026-11-30 | 2026-12-18 | 173 | 2026-11-30 | 2026-12-18 | 15d | 0.14d | 0d | A2210 |
| 177 | 3.7.2 | Fiber Glass Roof | 10d | 2026-12-21 | 2027-01-01 | 176 | 2026-12-21 | 2027-01-01 | 10d | 0.14d | 0d | A2220 |
| 178 | 3.7.2 | Sky Light | 25d | 2027-01-04 | 2027-02-05 | 177 | 2027-01-04 | 2027-02-05 | 25d | 0.14d |  | A2230 |

| ID | WBS | Task | Duration | Start | Finish | Predecessors | Baseline start | Baseline finish | Baseline duration | Total slack | Free slack | Text1 |
| --- | --- | --- | --- | --- | --- | --- | --- | --- | --- | --- | --- | --- |
| 179 | 3.8 | **Stair Finish** |  |  |  |  |  |  |  |  |  |  |
| 180 | 3.8.1 | **ST1** |  |  |  |  |  |  |  |  |  |  |
| 181 | 3.8.1 | งานแต่งผิวผนัง ท้องบันไดเดิม | 10d | 2027-03-19 | 2027-04-01 | 160 | 2027-03-19 | 2027-04-01 | 10d | 0d |  | A2240 |
| 182 | 3.8.1 | พื้นหินอ่อน | 20d | 2027-04-02 | 2027-04-29 | 181 | 2027-04-02 | 2027-04-29 | 20d | 0.01d | 0d | A2250 |
| 183 | 3.8.1 | ราวจับสแตนเลส | 15d | 2027-04-30 | 2027-05-20 | 182 | 2027-04-30 | 2027-05-20 | 15d | 0.01d |  | A2260 |
| 184 | 3.8.1 | งานสีผนัง ท้องบันได | 10d | 2027-04-30 | 2027-05-13 | 182 | 2027-04-30 | 2027-05-13 | 10d | 0.02d |  | A2270 |
| 185 | 3.8.2 | **ST2, ST3, ST4** |  |  |  |  |  |  |  |  |  |  |
| 186 | 3.8.2 | งานแต่งผิวผนัง ท้องบันไดเดิม | 20d | 2027-03-30 | 2027-04-26 | 181FS-24h | 2027-03-30 | 2027-04-26 | 20d | 0d |  | A2280 |
| 187 | 3.8.2 | งานสีผนัง ท้องบันได | 10d | 2027-04-27 | 2027-05-10 | 186 | 2027-04-27 | 2027-05-10 | 10d | 0.03d |  | A2290 |
| 188 | 3.8.3 | **ST5** |  |  |  |  |  |  |  |  |  |  |
| 189 | 3.8.3 | งานแต่งผิวผนัง ท้องบันไดเดิม | 10d | 2027-04-27 | 2027-05-10 | 186 | 2027-04-27 | 2027-05-10 | 10d | 0d |  | A2300 |
| 190 | 3.8.3 | พื้นหินอ่อน | 10d | 2027-05-11 | 2027-05-24 | 189 | 2027-05-11 | 2027-05-24 | 10d | 0d |  | A2310 |
| 191 | 3.8.3 | งานสีผนัง ท้องบันได | 5d | 2027-05-25 | 2027-05-31 | 190 | 2027-05-25 | 2027-05-31 | 5d | 0d |  | A2320 |
| 192 | 4 | **งานตกแต่งภายใน** |  |  |  |  |  |  |  |  |  |  |
| 193 | 4.1 | **1st Floor** |  |  |  |  |  |  |  |  |  |  |
| 194 | 4.1.1 | **Wall / Wall Fn.** |  |  |  |  |  |  |  |  |  |  |
| 195 | 4.1.1 | P4 ผนังกรุไม้อัดยาง ปิดทับด้วยวัสดุตามแบบตกแต่งภายใน | 20d | 2027-02-18 | 2027-03-17 | 196SS | 2027-02-18 | 2027-03-17 | 20d | 0.06d | 0d | A2330 |
| 196 | 4.1.1 | P3 งานติดตั้งผนังยูกลาส | 10d | 2027-02-18 | 2027-03-03 | 94 | 2027-02-18 | 2027-03-03 | 10d | 0.06d | 0d | A2340 |
| 197 | 4.2 | **Mezzanine** |  |  |  |  |  |  |  |  |  |  |
| 198 | 4.2.1 | **Wall / Wall Fn.** |  |  |  |  |  |  |  |  |  |  |
| 199 | 4.2.1 | P3 งานติดตั้งผนังยูกลาส | 10d | 2027-03-11 | 2027-03-24 | 200SS | 2027-03-11 | 2027-03-24 | 10d | 0.08d |  | A2350 |
| 200 | 4.2.1 | P5 ผนังยิปซัมบอร์ดกรุวัสดุซับเสียง ปิดทับด้วยวัสดุตามแบบ ID | 20d | 2027-03-11 | 2027-04-07 | 113 | 2027-03-11 | 2027-04-07 | 20d | 0.02d | 0d | A2360 |
| 201 | 4.2.1 | P4 ผนังกรุไม้อัดยาง ปิดทับด้วยวัสดุตามแบบตกแต่งภายใน | 20d | 2027-03-11 | 2027-04-07 | 200SS | 2027-03-11 | 2027-04-07 | 20d | 0.06d |  | A2370 |
| 202 | 4.2.2 | **Ceiling** |  |  |  |  |  |  |  |  |  |  |
| 203 | 4.2.2 | C2.4, C3.4 ห้องประชุม งานฝ้าอลูมิเนียม ตกแต่งตามแบบ ID | 15d | 2027-04-08 | 2027-04-28 | 200 | 2027-04-08 | 2027-04-28 | 15d | 0.02d | 0d | A2380 |

| ID | WBS | Task | Duration | Start | Finish | Predecessors | Baseline start | Baseline finish | Baseline duration | Total slack | Free slack | Constraint | Text1 |
| --- | --- | --- | --- | --- | --- | --- | --- | --- | --- | --- | --- | --- | --- |
| 204 | 4.3 | **2nd Floor** |  |  |  |  |  |  |  |  |  |  |  |
| 205 | 4.3.1 | **Wall / Wall Fn.** |  |  |  |  |  |  |  |  |  |  |  |
| 206 | 4.3.1 | P5 ผนังยิปซัมบอร์ดกรุวัสดุซับเสียง ปิดทับด้วยวัสดุตามแบบ ID | 20d | 2027-02-26 | 2027-03-25 | 131 | 2027-02-26 | 2027-03-25 | 20d | 0.01d | 0d |  | A2390 |
| 207 | 4.3.2 | **Ceiling** |  |  |  |  |  |  |  |  |  |  |  |
| 208 | 4.3.2 | C2.4, C3.4 ห้องประชุม งานฝ้าอลูมิเนียม ตกแต่งตามแบบ ID | 20d | 2027-03-26 | 2027-04-22 | 206 | 2027-03-26 | 2027-04-22 | 20d | 0.03d | 0d |  | A2400 |
| 209 | 4.3.2 | C3.3 ทางเดิน ฝ้าอลูมิเนียม ตามแบบ | 20d | 2027-03-26 | 2027-04-22 | 206 | 2027-03-26 | 2027-04-22 | 20d | 0.01d | 0d |  | A2410 |
| 210 | 4.4 | **3rd Floor** |  |  |  |  |  |  |  |  |  |  |  |
| 211 | 4.4.1 | **Wall / Wall Fn.** |  |  |  |  |  |  |  |  |  |  |  |
| 212 | 4.4.1 | P5 ผนังยิปซัมบอร์ดกรุวัสดุซับเสียง ปิดทับด้วยวัสดุตามแบบตกแต่งภายใน | 20d | 2027-04-09 | 2027-05-06 | 149 | 2027-04-09 | 2027-05-06 | 20d | 0d |  |  | A2420 |
| 213 | 4.4.2 | **Ceiling** |  |  |  |  |  |  |  |  |  |  |  |
| 214 | 4.4.2 | C3.2 ฝ้า Office ยิปซัมฟลอย กรุไม้อัดสัก โครงคร่าวไม้ ทำสีธรรมชาติ | 20d | 2027-05-04 | 2027-05-31 | 212FS-24h | 2027-05-04 | 2027-05-31 | 20d | 0d |  |  | A2430 |
| 215 | 4.4.2 | C3.2 ฝ้า ทางเดิน ฝ้าไม้อัดสัก โครงคร่าวไม้ ทำสีธรรมชาติ | 20d | 2027-05-04 | 2027-05-31 | 212FS-24h | 2027-05-04 | 2027-05-31 | 20d | 0d |  |  | A2440 |
| 216 | 4.4.2 | C3.7 ห้องประชุม ฝ้าไม้อัดสัก กรุอลูมิเนียม | 15d | 2027-05-07 | 2027-05-27 | 212 | 2027-05-07 | 2027-05-27 | 15d | 0d |  |  | A2450 |
| 217 | 4.5 | **R Floor** |  |  |  |  |  |  |  |  |  |  |  |
| 218 | 4.5.1 | **Ceiling** |  |  |  |  |  |  |  |  |  |  |  |
| 219 | 4.5.1 | C3.8 ฝ้าไม้ HRM | 10d | 2027-04-23 | 2027-05-06 | 166 | 2027-04-23 | 2027-05-06 | 10d | 0d |  |  | A2460 |
| 220 | 5 | **งานติดตั้ง Lightning Protection System ชั้น Roof** |  |  |  |  |  |  |  |  |  |  |  |
| 221 | 5 | งานติดตั้ง Lightning Protection System | 30d | 2027-04-05 | 2027-05-14 |  | 2027-04-05 | 2027-05-14 | 30d | 0.02d |  | start no earlier than 2027-04-05 | A2470 |
| 222 | 6 | **External MEP** |  |  |  |  |  |  |  |  |  |  |  |
| 223 | 6 | ติดตั้งถังบำบัดน้ำเสีย ( WWTP ) | 25d | 2026-11-27 | 2026-12-31 | 62 | 2026-11-27 | 2026-12-31 | 25d | 0.18d |  |  | A2480 |
| 224 | 6 | ติดตั้งถังดักไขมัน | 20d | 2026-12-09 | 2027-01-05 | 63 | 2026-12-09 | 2027-01-05 | 20d | 0.17d |  |  | A2490 |
| 225 | 6 | ติดตั้งถังเก็บน้ำประปา ( Water Tank ) และ Cold Water Booster Pump | 20d | 2026-11-06 | 2026-12-03 | 61 | 2026-11-06 | 2026-12-03 | 20d | 0.21d |  |  | A2500 |
| 226 | 6 | Electrical and Communication Main Incomming | 55d | 2026-12-09 | 2027-02-23 | 64FS-56h | 2026-12-09 | 2027-02-23 | 55d | 0.12d |  |  | A2510 |
| 227 | 6 | ติดตั้ง Unit Substation และ Generator Set | 60d | 2026-12-18 | 2027-03-11 | 64 | 2026-12-18 | 2027-03-11 | 60d | 0.1d | 0d |  | A2520 |
| 228 | 6 | Grounding System | 50d | 2026-12-18 | 2027-02-25 | 227SS | 2026-12-18 | 2027-02-25 | 50d | 0.11d |  |  | A2530 |

| ID | WBS | Task | Duration | Start | Finish | Predecessors | Baseline start | Baseline finish | Baseline duration | Total slack | Free slack | Constraint | Text1 |
| --- | --- | --- | --- | --- | --- | --- | --- | --- | --- | --- | --- | --- | --- |
| 229 | 7 | **Landscape** |  |  |  |  |  |  |  |  |  |  |  |
| 230 | 7.1 | **Hardscape** |  |  |  |  |  |  |  |  |  |  |  |
| 231 | 7.1 | Hardscape | 45d | 2027-01-18 | 2027-03-19 | 71 | 2027-01-18 | 2027-03-19 | 45d | 0.01d | 0d |  | A2540 |
| 232 | 7.2 | **Softscape** |  |  |  |  |  |  |  |  |  |  |  |
| 233 | 7.2 | Softscape | 45d | 2027-03-22 | 2027-05-21 | 231 | 2027-03-22 | 2027-05-21 | 45d | 0.01d |  |  | A2550 |
| 234 | 7.3 | **Lighting** |  |  |  |  |  |  |  |  |  |  |  |
| 235 | 7.3 | Lighting Landscape | 30d | 2027-03-03 | 2027-04-13 |  | 2027-03-03 | 2027-04-13 | 30d | 0.06d |  | start no earlier than 2027-03-03 | A2560 |
| 236 | 8 | **คุรุภัณฑ์** |  |  |  |  |  |  |  |  |  |  |  |
| 237 | 8 | คุรุภัณฑ์ภาพและเสียง | 45d | 2027-03-22 | 2027-05-21 |  | 2027-03-22 | 2027-05-21 | 45d | 0.01d |  | start no earlier than 2027-03-22 | A2570 |
| 238 | 8 | คุรุภัณฑ์ลอยตัว | 45d | 2027-02-01 | 2027-04-02 |  | 2027-02-01 | 2027-04-02 | 45d | 0.05d | 0d | start no earlier than 2027-02-01 | A2580 |
| 239 | 8 | Signage | 30d | 2027-02-01 | 2027-03-12 | 238SS | 2027-02-01 | 2027-03-12 | 30d | 0.09d |  |  | A2590 |
| 240 | 8 | ผ้าม่าน | 20d | 2027-03-22 | 2027-04-16 | 238FS-80h | 2027-03-22 | 2027-04-16 | 20d | 0.05d |  |  | A2600 |
| 241 | 9 | **Other** |  |  |  |  |  |  |  |  |  |  |  |
| 242 | 9.1 | **Lift** |  |  |  |  |  |  |  |  |  |  |  |
| 243 | 9.1 | ผนังกระจกลิฟท์ | 30d | 2026-10-30 | 2026-12-10 | 28 | 2026-10-30 | 2026-12-10 | 30d | 0.02d | 0d |  | A2610 |
| 244 | 9.1 | ติดตั้งลิฟท์ | 70d | 2026-12-11 | 2027-03-18 | 243 | 2026-12-11 | 2027-03-18 | 70d | 0.02d | 0d |  | A2620 |
| 245 | 9.1 | Test | 30d | 2027-03-19 | 2027-04-29 | 244 | 2027-03-19 | 2027-04-29 | 30d | 0.02d | 0d |  | A2630 |
| 246 | 9.1 | ตกแต่งโถงลิฟท์ | 10d | 2027-04-30 | 2027-05-13 | 245 | 2027-04-30 | 2027-05-13 | 10d | 0.02d |  |  | A2640 |
| 247 | 9.2 | **Sanitary** |  |  |  |  |  |  |  |  |  |  |  |
| 248 | 9.2 | 1st Floor | 10d | 2027-02-08 | 2027-02-19 | 92 | 2027-02-08 | 2027-02-19 | 10d | 0.12d |  |  | A2650 |
| 249 | 9.2 | M Floor | 10d | 2027-03-08 | 2027-03-19 | 111 | 2027-03-08 | 2027-03-19 | 10d | 0.09d |  |  | A2660 |
| 250 | 9.2 | 2nd Floor | 10d | 2027-04-05 | 2027-04-16 | 129 | 2027-04-05 | 2027-04-16 | 10d | 0.05d |  |  | A2670 |
| 251 | 9.2 | 3rd Floor | 10d | 2027-05-03 | 2027-05-14 | 147 | 2027-05-03 | 2027-05-14 | 10d | 0.02d |  |  | A2680 |
| 252 | 9.3 | **งานผนังและกันสาดภายนอก** |  |  |  |  |  |  |  |  |  |  |  |
| 253 | 9.3 | งานตกแต่งผนังภายนอกเดิม | 50d | 2027-03-19 | 2027-05-27 | 160 | 2027-03-19 | 2027-05-27 | 50d | 0d |  |  | A2690 |
| 254 | 9.3 | งานระบบกันซึมกันสาด พื้นยื่นเดิม | 45d | 2027-01-11 | 2027-03-12 | 174 | 2027-01-11 | 2027-03-12 | 45d | 0.09d |  |  | A2700 |
